# NBIA 5.0

Schedule from MS Project, 2010-09-27 to 2011-04-01, A marks actual dates.
NCI

## Calendars

- Standard: Mon-Fri 08:00-12:00, 13:00-17:00; Sat-Sun off. Exceptions (off unless hours are given): 2010-11-25 to 2010-11-26, 2010-12-24, 2010-12-27 (d).

## Resources

| Resource |
| --- |
| Eric |
| Jim |
| 3 |
| Qinyan |
| Quy |
| Anna |
| Prakash |
| Eric2 |
| Brian |
| Prakash2 |

## Schedule

| ID | WBS | Task | Type | Duration | Start | Finish | Predecessors | Complete | Total slack | Constraint | Resources | Work | Actual work |
| --- | --- | --- | --- | --- | --- | --- | --- | --- | --- | --- | --- | --- | --- |
| 1 | 1 | Ivy Repository Migration |  | 1w | 2010-09-27 A | 2010-10-01 A |  | 100% |  |  | Eric | 40h | 40h |
| 3 | 2 | **Data Access Enhancements** |  | 28d | 2010-10-04 A | 2010-11-10 A |  | 100% |  |  |  | 304h | 304h |
| 4 | 2.1 | Split webapp dao-business logic |  | 1w | 2010-10-04 A | 2010-10-08 A |  | 100% |  |  | Eric | 40h | 40h |
| 5 | 2.2 | Capture baseline benchmarks |  | 1w | 2010-10-04 A | 2010-10-08 A |  | 100% |  |  | Jim | 40h | 40h |
| 6 | 2.3 | Introduce Spring data access into CTP |  | 2w | 2010-10-04 A | 2010-10-15 A |  | 100% |  |  | Jim | 80h | 80h |
| 7 | 2.4 | Post-Spring Benchmarks |  | 2d | 2010-10-18 A | 2010-10-19 A | 6 | 100% |  |  | Jim | 16h | 16h |
| 8 | 2.5 | CTP upgrade to X42 |  | 1w | 2010-10-20 A | 2010-10-26 A |  | 100% |  |  | Jim | 40h | 40h |
| 9 | 2.6 | Introduce Spring data access into webapp |  | 2w | 2010-10-11 A | 2010-10-22 A | 4 | 100% |  |  | Jim | 80h | 80h |
| 10 | 2.7 | Evaluate possibility of merging CTP-webapp data access |  | 1d | 2010-11-10 A | 2010-11-10 A |  | 100% |  |  | Jim | 8h | 8h |
| 12 | 3 | **Oracle Support** |  | 25d | 2010-10-11 A | 2010-11-12 A |  | 100% |  |  |  | 280h | 280h |
| 13 | 3.1 | Translate Schema |  | 2w | 2010-10-11 A | 2010-10-22 A |  | 100% |  |  | Eric | 80h | 80h |
| 14 | 3.2 | Setup/Request new Oracle instance with migration |  | 2w | 2010-10-25 A | 2010-11-05 A | 13 | 100% |  |  | Eric2 | 80h | 80h |
| 15 | 3.3 | Translate custom SQL in Hibernate mappings |  | 1w | 2010-10-25 A | 2010-10-29 A |  | 100% |  |  | Eric | 40h | 40h |
| 16 | 3.4 | Setup Oracle-specific Liquibase configuration |  | 2d | 2010-11-01 A | 2010-11-02 A |  | 100% |  |  | Eric | 16h | 16h |
| 17 | 3.5 | Custom SQL in patient search |  | 2d | 2010-11-03 A | 2010-11-04 A |  | 100% |  |  | Eric | 16h | 16h |
| 18 | 3.6 | Custom SQL in submission history |  | 2d | 2010-11-05 A | 2010-11-08 A |  | 100% |  |  | Eric | 16h | 16h |
| 19 | 3.7 | Deployment Scripts and GUI Installer |  | 4d | 2010-11-09 A | 2010-11-12 A | 18 | 100% |  |  | Eric | 32h | 32h |
| 21 | 4 | **Ultrasound search (Round 1)** |  | 37d | 2010-09-27 A | 2010-11-16 A |  | 100% |  |  |  | 296h | 296h |
| 22 | 4.1 | General Research |  | 1w | 2010-09-27 A | 2010-10-01 A |  | 100% |  |  | Qinyan | 40h | 40h |
| 23 | 4.2 | Map SME requirements to concrete DICOM tags and wireframe |  | 2w | 2010-10-04 A | 2010-10-15 A |  | 100% |  |  | Qinyan | 80h | 80h |
| 24 | 4.3 | Customize Classic Search UI to include US fields |  | 1w | 2010-10-18 A | 2010-10-22 A |  | 100% |  |  | Qinyan | 40h | 40h |
| 25 | 4.4 | Customize view series page to handle ultrasound |  | 2w | 2010-10-25 A | 2010-11-05 A |  | 100% |  |  | Qinyan | 80h | 80h |
| 26 | 4.5 | Map DICOM tags to NBIA internal domain model (includes code changes) |  | 7d | 2010-11-08 A | 2010-11-16 A |  | 100% |  |  | Qinyan | 56h | 56h |
| 28 | 5 | ****** SCOPE NAILED DOWN ****** | milestone | 0d | 2010-09-27 | 2010-09-27 |  |  | 131d |  |  |  |  |
| 30 | 6 | HL7 v3 Training |  | 2d | 2010-11-15 A | 2010-11-16 A |  | 100% |  | must start on 2010-11-15 | Eric | 16h | 16h |
| 32 | 7 | LIDC annotation of annotation re-generation |  | 5d | 2010-11-16 A | 2010-11-22 A |  | 100% |  | must start on 2010-11-16 | Qinyan | 40h | 40h |

| ID | WBS | Task | Duration | Start | Finish | Predecessors | Complete | Remaining | Total slack | Constraint | Resources | Work | Actual work |
| --- | --- | --- | --- | --- | --- | --- | --- | --- | --- | --- | --- | --- | --- |
| 34 | 8 | **Ultrasound Search (Round 2)** | 12d | 2010-11-16 A | 2010-12-03 A |  | 100% |  |  |  |  | 144h | 144h |
| 35 | 8.1 | Deploy NBIA for Anna to experiment on | 1d | 2010-11-16 A | 2010-11-16 A |  | 100% |  |  |  | Jim | 8h | 8h |
| 36 | 8.2 | SME experimentation | 1w | 2010-11-17 A | 2010-11-23 A | 35 | 100% |  |  |  | Anna | 40h | 40h |
| 37 | 8.3 | Review SME feedback | 1d | 2010-11-24 A | 2010-11-24 A | 36 | 100% |  |  |  | Eric; Qinyan | 16h | 16h |
| 38 | 8.4 | Map DICOM tags to NBIA internal domain model (includes code changes) | 1w | 2010-11-29 A | 2010-12-03 A | 37 | 100% |  |  |  | Qinyan | 40h | 40h |
| 39 | 8.5 | Add modality info to web search UI | 1w | 2010-11-19 A | 2010-11-29 A |  | 100% |  |  | must start on 2010-11-19 | Prakash | 40h | 40h |
| 41 | 9 | **NBIA 5.0** | 24d? | 2010-11-12 A | 2010-12-17 |  | 98% | 0.49d? | 0d |  |  | 395.4h | 387.4h |
| 42 | 9.1 | Decouple deletion dao-business logic (Data Access Enhancements) | 1w | 2010-11-17 A | 2010-11-23 A |  | 100% |  |  | must start on 2010-11-17 | Jim | 40h | 40h |
| 44 | 9.2 | AHP3 Support | 14d? | 2010-11-16 A | 2010-12-07 A |  | 100% |  |  | must start on 2010-11-16 | Eric2 | 112h | 112h |
| 46 | 9.3 | Update Installation Guide | 1d | 2010-11-17 A | 2010-11-17 A |  | 100% |  |  | must start on 2010-11-17 | Eric | 4.4h | 4.4h |
| 47 | 9.4 | Appsupport Review of Installation Guide | 3d | 2010-11-19 A | 2010-11-23 A |  | 100% |  |  | must start on 2010-11-19 | Brian | 24h | 24h |
| 49 | 9.5 | Push Tag #1 to QA | 1h | 2010-11-12 A | 2010-11-12 A |  | 100% |  |  | start no earlier than 2010-11-12 | Eric | 1h | 1h |
| 51 | 9.6 | Prepare release notes | 4h | 2010-11-12 A | 2010-11-12 A | 49 | 100% |  |  |  | Eric | 4h | 4h |
| 53 | 9.7 | Push Tag #2 to QA | 1h | 2010-11-24 A | 2010-11-24 A | 42, 51 | 100% |  |  |  | Eric | 1h | 1h |
| 55 | 9.8 | QA Testing | 16d | 2010-11-18 A | 2010-12-13 A | 49 | 100% |  |  | must finish on 2010-12-13 | Quy | 128h | 128h |
| 57 | 9.9 | Migrate staging MySQL -> Oracle | 3d | 2010-12-03 A | 2010-12-07 A |  | 100% |  |  | must finish on 2010-12-07 | Eric | 24h | 24h |
| 58 | 9.10 | NBIA 5.0 Staging | 1d | 2010-12-13 A | 2010-12-13 A | 57 | 100% |  |  | must start on 2010-12-13 | Eric | 8h | 8h |
| 59 | 9.11 | Sanity Regression against staging | 1d? | 2010-12-13 A | 2010-12-14 A | 58 | 100% |  |  | must start on 2010-12-13 | Eric; Quy | 16h | 16h |
| 60 | 9.12 | Order AppScan on staging | 1h | 2010-12-14 A | 2010-12-14 A |  | 100% |  |  | start no earlier than 2010-12-14 | Eric | 1h | 1h |
| 62 | 9.13 | Migrate production MySQL -> Oracle | 3d | 2010-12-13 A | 2010-12-15 A |  | 100% |  |  | must start on 2010-12-13 | Eric | 24h | 24h |
| 64 | 9.14 | NBIA 5.0 Production | 1d | 2010-12-17 | 2010-12-17 | 62, 60 |  |  | 0d | must start on 2010-12-17 | Eric | 8h |  |
| 66 | 10 | **RSNA (Jim)** | 5d | 2010-11-29 A | 2010-12-03 A |  | 100% |  |  |  |  | 40h | 40h |
| 67 | 10.1 | CTP meeting with John | 1d | 2010-11-29 A | 2010-11-29 A |  | 100% |  |  | must start on 2010-11-29 | Jim | 8h | 8h |
| 68 | 10.2 | Attend Session of Steamline Imaging Server | 1d | 2010-11-30 A | 2010-11-30 A | 67 | 100% |  |  |  | Jim | 8h | 8h |
| 69 | 10.3 | Check out google earth Imaging Technology | 1d | 2010-12-01 A | 2010-12-01 A | 68 | 100% |  |  |  | Jim | 8h | 8h |
| 70 | 10.4 | Research for Path Imaging Storage in DICOM format | 1d | 2010-12-02 A | 2010-12-02 A | 69 | 100% |  |  | start no earlier than 2010-11-29 | Jim | 8h | 8h |
| 71 | 10.5 | Attend session of Ultrasound Imaging to seek a better way to implement NBIA | 4h | 2010-12-03 A | 2010-12-03 A | 70 | 100% |  |  |  | Jim | 4h | 4h |
| 72 | 10.6 | Check out some products with Path Imaging Storage | 4h | 2010-12-03 A | 2010-12-03 A | 71 | 100% |  |  | finish no earlier than 2010-12-03 | Jim | 4h | 4h |

Notes:
- 68: Fake dependency here to make life easier

| ID | WBS | Task | Duration | Start | Finish | Predecessors | Complete | Total slack | Constraint | Resources | Work | Actual work |
| --- | --- | --- | --- | --- | --- | --- | --- | --- | --- | --- | --- | --- |
| 74 | 11 | **External Model Harmonization** | 6d | 2010-11-29 A | 2010-12-06 A |  | 100% |  |  |  | 24h | 24h |
| 75 | 11.1 | CBIIT Self-Study on DSR,metadata,etc. pt 1 | 2d | 2010-11-29 A | 2010-11-30 A |  | 100% |  | must start on 2010-11-29 | Prakash | 16h | 16h |
| 76 | 11.2 | CBIIT Self-Study on DSR,metadata,etc. pt 2 | 1d | 2010-12-06 A | 2010-12-06 A |  | 100% |  | must start on 2010-12-06 | Prakash | 8h | 8h |
| 78 | 12 | **Bug Fixing** | 16.5d | 2010-11-17 | 2010-12-13 |  |  | 0d |  |  |  |  |
| 79 | 12.1 | Add warning text to GUI installer about potential to wipe out CTP storage system | 3h | 2010-11-17 | 2010-11-17 |  |  | 0d | must start on 2010-11-17 |  |  |  |
| 80 | 12.2 | GUI installer fails on upgrade from NBIA 4.4 | 2d | 2010-11-18 | 2010-11-19 |  |  | 0d | must start on 2010-11-18 |  |  |  |
| 81 | 12.3 | Zipping of download basket returns empty basket | 1d | 2010-11-19 | 2010-11-19 |  |  | 0d | must start on 2010-11-19 |  |  |  |
| 82 | 12.4 | GUI installer fails when doing install with MySQL | 4h | 2010-11-23 | 2010-11-23 |  |  | 0d | must start on 2010-11-23 |  |  |  |
| 83 | 12.5 | FTP downloads do not record the download the same way the HTTP and Download Mgr downloads do | 4d | 2010-12-01 | 2010-12-06 |  |  | 0d | must start on 2010-12-01 |  |  |  |
| 84 | 12.6 | FTP download that includes remote series fails | 2d | 2010-12-02 | 2010-12-03 |  |  | 0d | must start on 2010-12-02 |  |  |  |
| 85 | 12.7 | NCIA grid service port number updating from 21080 to 8080 | 2d | 2010-12-01 | 2010-12-02 |  |  | 0d | must start on 2010-12-01 |  |  |  |
| 86 | 12.8 | Upgrading NBIA 4.4 to 5.0 GUI Installation failed (AHP3 regression) | 1d | 2010-12-03 | 2010-12-03 |  |  | 0d | must start on 2010-12-03 |  |  |  |
| 87 | 12.9 | NBIA 5.0 local instance with Oracle backend not working when integrated with UPT | 2d | 2010-12-09 | 2010-12-10 |  |  | 0d | must start on 2010-12-09 |  |  |  |
| 88 | 12.10 | Download Manager fails to download remote series | 4h | 2010-12-11 | 2010-12-13 |  |  | 0d | must start on 2010-12-11 |  |  |  |
| 91 | 13 | **AIM Search Prototype** | 8.5d | 2010-12-01 A | 2010-12-13 A |  | 100% |  |  |  | 40h | 40h |
| 92 | 13.1 | Search UI | 3d | 2010-12-01 A | 2010-12-03 A |  | 100% |  | must start on 2010-12-01 | Eric | 24h | 24h |
| 93 | 13.2 | **AIM Submission** | 5.5d | 2010-12-06 A | 2010-12-13 A |  | 100% |  |  |  | 16h | 16h |
| 94 | 13.2.1 | Annotation Recognizer | 4h | 2010-12-06 A | 2010-12-06 A | 92 | 100% |  |  | Eric | 4h | 4h |
| 95 | 13.2.2 | AIM Parsing | 1d | 2010-12-09 A | 2010-12-09 A | 94 | 100% |  |  | Eric | 8h | 8h |
| 96 | 13.2.3 | Add relational tables | 4h | 2010-12-13 A | 2010-12-13 A | 95 | 100% |  |  | Eric | 4h | 4h |
| 99 | 14 | **Transition Documentation** | 15d | 2010-12-08 A | 2010-12-30 A |  | 100% |  |  |  | 400h | 400h |
| 100 | 14.1 | Grid Service | 5d | 2010-12-08 A | 2010-12-14 A |  | 100% |  | must start on 2010-12-08 | Eric | 40h | 40h |
| 101 | 14.2 | Aggregate documentation | 2d | 2010-12-29 A | 2010-12-30 A |  | 100% |  | must start on 2010-12-29 | Eric | 16h | 16h |
| 103 | 14.3 | Ultrasound leftovers | 3d | 2010-12-08 A | 2010-12-10 A |  | 100% |  | must start on 2010-12-08 | Qinyan | 24h | 24h |
| 104 | 14.4 | Cedara | 3d | 2010-12-09 A | 2010-12-13 A | 103 | 100% |  |  | Qinyan | 24h | 24h |
| 105 | 14.5 | QC Tool | 2d | 2010-12-14 A | 2010-12-15 A | 104 | 100% |  |  | Qinyan | 16h | 16h |
| 106 | 14.6 | Shared List | 4d | 2010-12-16 A | 2010-12-21 A | 105 | 100% |  |  | Qinyan | 32h | 32h |
| 107 | 14.7 | Collection Description | 4d | 2010-12-22 A | 2010-12-29 A | 106 | 100% |  |  | Qinyan | 32h | 32h |
| 109 | 14.8 | CTP | 5d | 2010-12-08 A | 2010-12-14 A |  | 100% |  | must start on 2010-12-08 | Jim | 40h | 40h |
| 110 | 14.9 | Database Adapter | 3d | 2010-12-15 A | 2010-12-17 A | 109 | 100% |  |  | Jim | 24h | 24h |
| 111 | 14.10 | Dynamic Search | 3d | 2010-12-20 A | 2010-12-22 A | 110 | 100% |  |  | Jim | 24h | 24h |
| 112 | 14.11 | Deletion | 3d | 2010-12-23 A | 2010-12-29 A | 111 | 100% |  |  | Jim | 24h | 24h |
| 114 | 14.12 | Saved Query | 3d | 2010-12-09 A | 2010-12-13 A |  | 100% |  | must start on 2010-12-09 | Prakash | 24h | 24h |
| 115 | 14.13 | Data Basket | 3d | 2010-12-14 A | 2010-12-16 A | 114 | 100% |  |  | Prakash | 24h | 24h |
| 116 | 14.14 | HTTP/FTP Download | 3d | 2010-12-17 A | 2010-12-21 A | 115 | 100% |  |  | Prakash | 24h | 24h |
| 117 | 14.15 | Download Mgr | 4d | 2010-12-22 A | 2010-12-29 A | 116 | 100% |  |  | Prakash | 32h | 32h |

Notes:
- 78: add subtask here for every bug fixed

| ID | WBS | Task | Type | Duration | Start | Finish | Predecessors | Complete | Remaining | Total slack | Constraint | Resources | Work | Actual work |
| --- | --- | --- | --- | --- | --- | --- | --- | --- | --- | --- | --- | --- | --- | --- |
| 120 | 15 | **Vacations** |  | 1d? | 2010-09-27 | 2010-09-27 |  |  |  | 130d |  |  |  |  |
| 121 | 15.1 | Eric (11/26,12/13, 12/20 - 12/28, 12/31 ) |  | 1d? | 2010-09-27 | 2010-09-27 |  |  |  | 130d |  |  |  |  |
| 122 | 15.2 | Jim (11/26, 12/24, 12/30-12/31) |  | 1d? | 2010-09-27 | 2010-09-27 |  |  |  | 130d |  |  |  |  |
| 123 | 15.3 | Qinyan (11/26, 12/24, 12/31) |  | 1d? | 2010-09-27 | 2010-09-27 |  |  |  | 130d |  |  |  |  |
| 124 | 15.4 | Praskash (11/26, 12/29-12/31) |  | 1d? | 2010-09-27 | 2010-09-27 |  |  |  | 130d |  |  |  |  |
| 126 | 16 | ==============End of POP=============== | milestone | 0d | 2010-12-31 | 2010-12-31 |  |  |  | 0d | must start on 2010-12-31 |  |  |  |
| 128 | 17 | SAIC stuff |  | 1w | 2011-01-03 A | 2011-01-07 A |  | 100% |  |  | must start on 2011-01-03 | Eric; Qinyan; Prakash | 120h | 120h |
| 130 | 18 | **Bugs (post 5.0)** |  | 4d | 2011-01-10 A | 2011-01-13 A |  | 100% |  |  |  |  | 32h | 32h |
| 131 | 18.1 | Deleting > 1000 series when they are referenced by shared list causes exception |  | 2d | 2011-01-10 A | 2011-01-11 A |  | 100% |  |  | must start on 2011-01-10 | Jim | 16h | 16h |
| 132 | 18.2 | Shared List creation can fail when greater than 1000 series elements |  | 2d | 2011-01-12 A | 2011-01-13 A | 131 | 100% |  |  |  | Jim | 16h | 16h |
| 134 | 19 | **Misc 5.1 Issues** |  | 49d | 2011-01-24 A | 2011-03-31 |  | 80% | 9.68d | 1d |  |  | 632h | 507.2h |
| 135 | 19.1 | [NBIA-275] Merge Modality Description Feature |  | 1d | 2011-01-24 A | 2011-01-24 A |  | 100% |  |  | must start on 2011-01-24 | Prakash | 8h | 8h |
| 136 | 19.2 | [NBIA-286] Merge FTP logging bug fix |  | 1d | 2011-01-25 A | 2011-01-25 A | 135 | 100% |  |  |  | Prakash | 8h | 8h |
| 137 | 19.3 | [NBIA-324] CQL that targets TrialDataProvenance will not return desired result set |  | 1.4w | 2011-01-26 A | 2011-02-03 A | 136 | 100% |  |  |  | Prakash | 56h | 56h |
| 138 | 19.4 | [NBIA-224 ] Remove storage service port number from the config file installer property files |  | 1d | 2011-02-04 A | 2011-02-04 A | 137 | 100% |  |  |  | Prakash | 8h | 8h |
| 139 | 19.5 | [NBIA-276] Improvement to viewing multiple pages of results |  | 3d | 2011-02-07 A | 2011-02-09 A | 138 | 100% |  |  |  | Prakash | 24h | 24h |
| 140 | 19.6 | [NBIA-320] Please add a true select all feature to the QC tool |  | 2d | 2011-02-10 A | 2011-02-11 A | 139 | 100% |  |  |  | Prakash | 16h | 16h |
| 141 | 19.7 | [NBIA-326] getNumberOfStudyTimePointForPatient returns cryptic error when Patient ID is not found. |  | 3d | 2011-02-14 A | 2011-02-16 A | 140 | 100% |  |  |  | Prakash | 24h | 24h |
| 142 | 19.8 | [NBIA-333] Remote Search between Oracle and MySQL based NBIA node returns incorrect results for Available on NBIA date range query |  | 5d | 2011-02-17 A | 2011-02-23 A | 141 | 100% |  |  |  | Prakash | 40h | 40h |
| 143 | 19.9 | [NBIA-352] Investigate - Enhance QC Tool to retrieve results piece-meal |  | 7d | 2011-02-24 A | 2011-03-04 A | 142 | 100% |  |  |  | Prakash | 56h | 56h |
| 144 | 19.10 | [NBIA-358] Devise prototype for classic search page that we can use to elicit requirements |  | 10d | 2011-03-07 A | 2011-03-18 A | 143 | 100% |  |  |  | Prakash | 80h | 80h |
| 145 | 19.11 | [NBIA-359] Restrict the number of results that can be returned by QC Tool search and provide submission date search criteria to focus results |  | 9d | 2011-03-21 A | 2011-03-31 | 144 | 10% | 8.1d | 1d |  | Prakash | 72h | 7.2h |
| 147 | 19.12 | [NBIA-337] In the view series page, highlighting of the series after adding to basket can be inconsistent |  | 3d | 2011-02-09 A | 2011-02-11 A |  | 100% |  |  | must start on 2011-02-09 | Qinyan | 24h | 24h |
| 149 | 19.13 | [NBIA-339] Long-running online deletion will appear to fail because of 5 minute Apache proxy timeout (at CBIIT) |  | 1w | 2011-02-23 A | 2011-03-01 A |  | 100% |  |  | must start on 2011-02-23 | Jim | 40h | 40h |

| ID | WBS | Task | Duration | Start | Finish | Predecessors | Complete | Remaining | Total slack | Constraint | Resources | Work | Actual work |
| --- | --- | --- | --- | --- | --- | --- | --- | --- | --- | --- | --- | --- | --- |
| 150 | 19.14 | **[NBIA-357] NBIA Grid Service to support AIM Object Query and Retrieval from NBIA** | 12d | 2011-03-02 A | 2011-03-17 A |  | 100% |  |  |  |  | 96h | 96h |
| 151 | 19.14.1 | Clean up JDBC mess | 1w | 2011-03-02 A | 2011-03-08 A | 149 | 100% |  |  |  | Jim | 40h | 40h |
| 152 | 19.14.2 | Add annotation support | 1w | 2011-03-09 A | 2011-03-15 A | 151 | 100% |  |  |  | Jim | 40h | 40h |
| 153 | 19.14.3 | Testing | 2d | 2011-03-16 A | 2011-03-17 A | 152 | 100% |  |  |  | Jim | 16h | 16h |
| 154 | 19.15 | [NBIA-370] Annotation files cannot be downloaded from remote node | 10d | 2011-03-18 A | 2011-03-31 | 150 | 25% | 7.5d | 1d |  | Jim | 80h | 20h |
| 156 | 20 | **Ultrasound Search Revisited Part 3 (branch)** | 40d | 2011-01-10 A | 2011-03-04 A |  | 100% |  |  |  |  | 344h | 344h |
| 157 | 20.1 | Merge branch into trunk | 1d | 2011-01-10 A | 2011-01-10 A | 128 | 100% |  |  |  | Qinyan | 8h | 8h |
| 158 | 20.2 | Update submission module to index tags | 7d | 2011-01-12 A | 2011-01-20 A | 157, 131 | 100% |  |  |  | Jim | 56h | 56h |
| 159 | 20.3 | Add fields to dynamic search | 3d | 2011-01-19 A | 2011-01-25 A | 158 | 100% |  |  |  | Jim | 24h | 24h |
| 160 | 20.4 | **Update search to include ultrasound tags** | 8d | 2011-01-11 A | 2011-01-20 A |  | 100% |  |  |  |  | 64h | 64h |
| 161 | 20.4.1 | Code | 1w | 2011-01-11 A | 2011-01-17 A | 157 | 100% |  |  |  | Qinyan | 40h | 40h |
| 162 | 20.4.2 | Unit Test | 3d | 2011-01-18 A | 2011-01-20 A | 161 | 100% |  |  |  | Qinyan | 24h | 24h |
| 163 | 20.5 | **Remote Search impact** | 13d | 2011-01-21 A | 2011-02-08 A |  | 100% |  |  |  |  | 104h | 104h |
| 164 | 20.5.1 | Search Terms | 7d | 2011-01-21 A | 2011-01-31 A | 162 | 100% |  |  |  | Qinyan | 56h | 56h |
| 165 | 20.5.2 | Image Drill Down (Backward Compatibility) | 6d | 2011-02-01 A | 2011-02-08 A | 164 | 100% |  |  |  | Qinyan | 48h | 48h |
| 166 | 20.6 | **Test** | 15d | 2011-02-14 A | 2011-03-04 A |  | 100% |  |  |  |  | 88h | 88h |
| 167 | 20.6.1 | Update Requirements Document | 2d | 2011-02-14 A | 2011-02-15 A | 147 | 100% |  |  |  | Qinyan | 16h | 16h |
| 168 | 20.6.2 | Develop Functional Test Plans | 2d | 2011-02-21 A | 2011-02-22 A | 167 | 100% |  |  | must start on 2011-02-21 | Qinyan | 16h | 16h |
| 169 | 20.6.3 | Execute Tests | 3d | 2011-02-24 A | 2011-02-28 A | 168 | 100% |  |  |  | Qinyan | 24h | 24h |
| 170 | 20.6.4 | [NBIA-355] Edit Query Does NOT Populate the Saved Query. | 1d | 2011-03-01 A | 2011-03-01 A | 169 | 100% |  |  |  | Qinyan | 8h | 8h |
| 171 | 20.6.5 | [NBIA-356] Slide Show is not working for Remote Ultrasound | 3d | 2011-03-02 A | 2011-03-04 A | 170 | 100% |  |  |  | Qinyan | 24h | 24h |
| 174 | 21 | **AIM Search Prototype Part 2** | 9.12d | 2011-01-11 A | 2011-01-24 A |  | 100% |  |  |  |  | 73h | 73h |
| 175 | 21.1 | **Local** | 9.12d | 2011-01-11 A | 2011-01-24 A |  | 100% |  |  |  |  | 73h | 73h |
| 176 | 21.1.1 | Data Access (domain, and DAO) | 3d | 2011-01-11 A | 2011-01-13 A | 128 | 100% |  |  | must start on 2011-01-11 | Eric | 24h | 24h |
| 177 | 21.1.2 | Connect Search UI to backend | 1w | 2011-01-14 A | 2011-01-20 A | 176 | 100% |  |  |  | Eric | 40h | 40h |
| 178 | 21.1.3 | AIM de-identification configuration | 1d | 2011-01-21 A | 2011-01-21 A | 177 | 100% |  |  |  | Eric | 8h | 8h |
| 179 | 21.1.4 | Evaluate/Demo | 1h | 2011-01-24 A | 2011-01-24 A | 178 | 100% |  |  |  | Eric | 1h | 1h |

| ID | WBS | Task | Duration | Start | Finish | Predecessors | Complete | Remaining | Total slack | Constraint | Resources | Work | Actual work |
| --- | --- | --- | --- | --- | --- | --- | --- | --- | --- | --- | --- | --- | --- |
| 181 | 22 | **caGrid 1.4/CQL 2.0 exploration** | 25d | 2011-01-25 A | 2011-03-01 |  | 96% | 0.97d | 23.75d |  |  | 155.34h | 153.48h |
| 182 | 22.1 | Install caGrid 1.4 | 1d | 2011-01-25 A | 2011-01-26 A | 159 | 100% |  |  |  | Jim | 8h | 8h |
| 183 | 22.2 | Generate NBIAService with caGrid 1.4 and port metadata filter | 1w | 2011-01-26 A | 2011-02-02 A | 182 | 100% |  |  |  | Jim | 40h | 40h |
| 184 | 22.3 | Research differences between CQL 2.0 and 1.x | 4d | 2011-02-02 A | 2011-02-08 A | 183 | 100% |  |  |  | Jim | 32h | 32h |
| 185 | 22.4 | **Test public data filter** | 15d | 2011-02-08 A | 2011-03-01 |  | 93% | 1d | 23.75d |  |  | 75.34h | 73.48h |
| 186 | 22.4.1 | Public Queries | 2d | 2011-02-08 A | 2011-02-10 A | 184 | 100% |  |  |  | Jim | 16h | 16h |
| 187 | 22.4.2 | Private Queries | 1d | 2011-02-10 A | 2011-02-11 A | 186 | 100% |  |  |  | Jim | 8h | 8h |
| 188 | 22.4.3 | Aggregation | 2d | 2011-02-14 A | 2011-02-16 A | 187 | 100% |  |  |  | Jim | 16h | 16h |
| 189 | 22.4.4 | Association Fetching | 9d | 2011-02-16 A | 2011-03-01 | 188 | 90% | 0.93d | 23.75d |  | Jim | 35.34h | 33.48h |
| 191 | 23 | **NIAMS Deployments** | 30.5d | 2011-01-24 A | 2011-03-07 A |  | 100% |  |  |  |  | 132h | 132h |
| 192 | 23.1 | NIAMS 4.5 Deployment - Staging | 4h | 2011-01-24 A | 2011-01-24 A |  | 100% |  |  | start no earlier than 2011-01-24 | Eric | 4h | 4h |
| 194 | 23.2 | **NIAMS 5.0 Deployment - Staging** | 10d | 2011-01-24 A | 2011-02-04 A |  | 100% |  |  |  |  | 80h | 80h |
| 195 | 23.2.1 | DB migration | 8d | 2011-01-24 A | 2011-02-02 A | 178 | 100% |  |  |  | Eric | 64h | 64h |
| 196 | 23.2.2 | Deploy | 2d | 2011-02-03 A | 2011-02-04 A | 195 | 100% |  |  | start no earlier than 2011-02-03 | Eric2 | 16h | 16h |
| 197 | 23.3 | NIAMS 4.5 Deployment - Prod | 4h | 2011-02-22 A | 2011-02-22 A | 192 | 100% |  |  | must start on 2011-02-22 | Eric | 4h | 4h |
| 198 | 23.4 | **NIAMS 5.0 Deployment - Prod** | 9d | 2011-02-22 A | 2011-03-07 A |  | 100% |  |  |  |  | 44h | 44h |
| 199 | 23.4.1 | DB migration | 1w | 2011-02-22 A | 2011-03-01 A | 197 | 100% |  |  |  | Eric | 40h | 40h |
| 200 | 23.4.2 | Deploy | 4h | 2011-03-07 A | 2011-03-07 A |  | 100% |  |  | must start on 2011-03-07 | Eric | 4h | 4h |
| 201 | 24 | **NBIA 5.0.1** | 16.5d | 2011-01-24 A | 2011-02-15 A |  | 100% |  |  |  |  | 113h | 113h |
| 202 | 24.1 | **NBIA 5.0.1 Staging** | 13.62d | 2011-01-24 A | 2011-02-10 A |  | 100% |  |  |  |  | 109h | 109h |
| 203 | 24.1.1 | Cut tag for QA | 1h | 2011-01-24 A | 2011-01-24 A |  | 100% |  |  | start no earlier than 2011-01-24 | Eric | 1h | 1h |
| 204 | 24.1.2 | QA Testing | 13d | 2011-01-24 A | 2011-02-10 A | 203 | 100% |  |  |  | Quy | 104h | 104h |
| 205 | 24.1.3 | Deploy | 4h | 2011-02-10 A | 2011-02-10 A | 204 | 100% |  |  |  | Eric | 4h | 4h |
| 207 | 24.2 | NBIA 5.0.1 Production | 4h | 2011-02-15 A | 2011-02-15 A | 203 | 100% |  |  | must start on 2011-02-15 | Eric | 4h | 4h |

| ID | WBS | Task | Duration | Start | Finish | Predecessors | Complete | Remaining | Total slack | Free slack | Constraint | Resources | Work | Actual work |
| --- | --- | --- | --- | --- | --- | --- | --- | --- | --- | --- | --- | --- | --- | --- |
| 208 | 25 | **SOA Training** | 3d | 2011-02-16 A | 2011-02-18 A |  | 100% |  |  |  |  |  | 48h | 48h |
| 209 | 25.1 | SOA Training (Eric) | 3d | 2011-02-16 A | 2011-02-18 A |  | 100% |  |  |  | must start on 2011-02-16 | Eric | 24h | 24h |
| 210 | 25.2 | SOA Training (Qinyan) | 3d | 2011-02-16 A | 2011-02-18 A |  | 100% |  |  |  | must start on 2011-02-16 | Qinyan | 24h | 24h |
| 212 | 26 | LSDAM, BRIDG support | 3mo | 2011-01-10 A | 2011-04-01 |  | 80% | 0.6mo | 0d |  | must start on 2011-01-10 | Eric2; Prakash2 | 960h | 768h |
| 214 | 27 | **NBIA 5.0.2** | 14.5d | 2011-03-08 A | 2011-03-28 |  | 82% | 2.59d | 0d |  |  |  | 152h | 132h |
| 215 | 27.1 | **(NIAMS) Branding** | 5d | 2011-03-08 A | 2011-03-14 A |  | 100% |  |  |  |  | Eric | 80h | 80h |
| 216 | 27.1.1 | Command-line Installer | 3d | 2011-03-08 A | 2011-03-10 A |  | 100% |  |  |  | must start on 2011-03-08 | Eric | 24h | 24h |
| 217 | 27.1.2 | GUI Installer | 2d | 2011-03-11 A | 2011-03-14 A | 216 | 100% |  |  |  |  | Eric | 16h | 16h |
| 218 | 27.2 | QA | 6d | 2011-03-15 A | 2011-03-22 | 215 | 75% | 1.5d | 2.5d | 1.5d |  | Quy | 48h | 36h |
| 219 | 27.3 | Update Installation Guide | 2d | 2011-03-15 A | 2011-03-16 A | 215 | 100% |  |  |  |  | Eric | 16h | 16h |
| 220 | 27.4 | NIAMS Staging Deployment | 4h | 2011-03-24 | 2011-03-24 | 218 |  |  | 1d |  | finish no earlier than 2011-03-24 | Eric | 4h |  |
| 221 | 27.5 | NIAMS Production Deployment | 4h | 2011-03-28 | 2011-03-28 | 220 |  |  | 0d |  | must start on 2011-03-28 | Eric | 4h |  |
| 223 | 28 | **[NBIA-361] Cedara-AIM Automation** | 18d | 2011-03-08 A | 2011-03-31 |  | 56% | 8d | 1d |  |  |  | 144h | 80h |
| 224 | 28.1 | Research cross-platform XSLT 2.0 implementation | 5d | 2011-03-08 A | 2011-03-14 A |  | 100% |  |  |  | must start on 2011-03-08 | Qinyan | 40h | 40h |
| 225 | 28.2 | **CTP Database Adapter Enhancement** | 8d | 2011-03-15 A | 2011-03-24 |  | 63% | 3d | 1d |  |  |  | 64h | 40h |
| 226 | 28.2.1 | Integrate XSLT transformation | 5d | 2011-03-15 A | 2011-03-21 A | 224 | 100% |  |  |  |  | Qinyan | 40h | 40h |
| 227 | 28.2.2 | Save/Update of transformed XML | 3d | 2011-03-22 | 2011-03-24 | 226 |  |  | 1d | 0d |  | Qinyan | 24h |  |
| 228 | 28.3 | Build/Deployment script changes | 1d | 2011-03-25 | 2011-03-25 | 227 |  |  | 1d | 0d |  | Qinyan | 8h |  |
| 229 | 28.4 | Testing | 4d | 2011-03-28 | 2011-03-31 | 228 |  |  | 1d |  |  | Qinyan | 32h |  |
